ID,Name,Begin date,End date,Duration,Completion,Cost,Coordinator,Predecessors,Outline number,Resources,Assignments,Task color,Web Link,Notes
1,Gestión del proyecto,04/01/2027,26/05/2027,100,0,,,,1,,,,,EDT 1.1
2,Elaborar el Acta de constitución y obtener su aprobación,04/01/2027,08/01/2027,5,0,1168.10,Gerente de Proyecto,,1.1,Gerente de Proyecto;Analista de Sistemas,Gerente de Proyecto:100;Analista de Sistemas:25,#c0392b,,EDT 1.1.1 · A01
3,Hito: Acta de constitución aprobada,08/01/2027,08/01/2027,0,0,0.00,Gerente de Proyecto,2,1.2,,,,,EDT 1.1.1 · H1
4,Elaborar el plan de gestión del proyecto,11/01/2027,22/01/2027,10,0,1460.96,Gerente de Proyecto,2,1.3,Gerente de Proyecto;QA / Tester,Gerente de Proyecto:60;QA / Tester:25,,,EDT 1.1.2 · A02
5,"Dar seguimiento y control al proyecto (informes, valor ganado, control de cambios)",03/02/2027,26/05/2027,78,0,9330.05,Gerente de Proyecto,11,1.4,Gerente de Proyecto,Gerente de Proyecto:60,,,EDT 1.1.3 · A03
6,Requisitos,11/01/2027,02/02/2027,17,0,,,,2,,,,,EDT 1.2
7,"Realizar entrevistas y encuestas a estudiantes, tutores y coordinación",11/01/2027,20/01/2027,8,0,1569.92,Analista de Sistemas,2,2.1,Analista de Sistemas;Diseñador UX/UI,Analista de Sistemas:100;Diseñador UX/UI:50,#c0392b,,EDT 1.2.1 · A04
8,Gestionar con la DITIC la autorización de credenciales institucionales,11/01/2027,29/01/2027,15,0,598.08,Gerente de Proyecto,2,2.2,Gerente de Proyecto,Gerente de Proyecto:20,,,EDT 1.2.1 · A05
9,Especificar los requisitos (SRS) y construir el Product Backlog,21/01/2027,29/01/2027,7,0,1445.58,Analista de Sistemas,7,2.3,Analista de Sistemas;Gerente de Proyecto;Diseñador UX/UI,Analista de Sistemas:100;Gerente de Proyecto:20;Diseñador UX/UI:25,#c0392b,,EDT 1.2.2 · A06
10,Validar los requisitos y el Product Backlog con el patrocinador,01/02/2027,02/02/2027,2,0,433.57,Analista de Sistemas,9,2.4,Analista de Sistemas;Gerente de Proyecto,Analista de Sistemas:100;Gerente de Proyecto:40,#c0392b,,EDT 1.2.2 · A07
11,Hito: Plan de gestión y requisitos aprobados,02/02/2027,02/02/2027,0,0,0.00,Gerente de Proyecto,4;10,2.5,,,,,EDT 1.2.2 · H2
12,Diseño UX/UI y arquitectura,03/02/2027,19/02/2027,11,0,,,,3,,,,,EDT 1.3
13,Diseñar wireframes y flujos de navegación,03/02/2027,12/02/2027,6,0,915.96,Diseñador UX/UI,10,3.1,Diseñador UX/UI;Analista de Sistemas,Diseñador UX/UI:100;Analista de Sistemas:25,#c0392b,,EDT 1.3.1 · A08
14,Elaborar el prototipo de alta fidelidad y validarlo con usuarios,15/02/2027,19/02/2027,5,0,763.30,Diseñador UX/UI,13,3.2,Diseñador UX/UI;Analista de Sistemas,Diseñador UX/UI:100;Analista de Sistemas:25,#c0392b,,EDT 1.3.1 · A09
15,Definir la arquitectura y el modelo de datos,03/02/2027,12/02/2027,6,0,1420.44,Desarrollador 1,10,3.3,Desarrollador 1;Desarrollador 2;Analista de Sistemas,Desarrollador 1:100;Desarrollador 2:50;Analista de Sistemas:25,#c0392b,,EDT 1.3.2 · A10
16,"Configurar hosting, base de datos, dominio, repositorio y CI/CD",15/02/2027,19/02/2027,5,0,950.20,Desarrollador 2,15,3.4,Desarrollador 2;Desarrollador 1,Desarrollador 2:100;Desarrollador 1:50,#c0392b,,EDT 1.3.3 · A11
17,Hito: Diseño y arquitectura aprobados,19/02/2027,19/02/2027,0,0,0.00,Gerente de Proyecto,14;16,3.5,,,#c0392b,,EDT 1.3.3 · H3
18,Módulo de usuarios y tutores,22/02/2027,05/03/2027,10,0,,,,4,,,,,EDT 1.4
19,Desarrollar el inicio de sesión con credenciales institucionales y el perfil del estudiante,22/02/2027,05/03/2027,10,0,2601.00,Desarrollador 1,17;8,4.1,Desarrollador 1;Diseñador UX/UI;QA / Tester;Analista de Sistemas,Desarrollador 1:100;Diseñador UX/UI:25;QA / Tester:50;Analista de Sistemas:25,#c0392b,,EDT 1.4.1 · A12
20,Desarrollar el registro y la validación de tutores por materia,22/02/2027,05/03/2027,10,0,2352.20,Desarrollador 2,17,4.2,Desarrollador 2;Diseñador UX/UI;QA / Tester;Analista de Sistemas,Desarrollador 2:100;Diseñador UX/UI:25;QA / Tester:50;Analista de Sistemas:25,#c0392b,,EDT 1.4.2 · A13
21,"Módulo de búsqueda, agenda y notificaciones",08/03/2027,05/04/2027,20,0,,,,5,,,,,EDT 1.5
22,Desarrollar la búsqueda y el perfil público de tutores,08/03/2027,19/03/2027,10,0,2352.20,Desarrollador 2,19;20,5.1,Desarrollador 2;Diseñador UX/UI;QA / Tester;Analista de Sistemas,Desarrollador 2:100;Diseñador UX/UI:25;QA / Tester:50;Analista de Sistemas:25,#c0392b,,EDT 1.5.1 · A14
23,Desarrollar la gestión de disponibilidad (agenda) del tutor,08/03/2027,19/03/2027,10,0,2601.00,Desarrollador 1,19;20,5.2,Desarrollador 1;Diseñador UX/UI;QA / Tester;Analista de Sistemas,Desarrollador 1:100;Diseñador UX/UI:25;QA / Tester:50;Analista de Sistemas:25,#c0392b,,EDT 1.5.2 · A15
24,"Desarrollar la reserva, cancelación y reprogramación de sesiones",22/03/2027,05/04/2027,10,0,2601.00,Desarrollador 1,22;23,5.3,Desarrollador 1;Diseñador UX/UI;QA / Tester;Analista de Sistemas,Desarrollador 1:100;Diseñador UX/UI:25;QA / Tester:50;Analista de Sistemas:25,#c0392b,,EDT 1.5.2 · A16
25,Desarrollar las notificaciones y los recordatorios,22/03/2027,05/04/2027,10,0,2352.20,Desarrollador 2,22;23,5.4,Desarrollador 2;Diseñador UX/UI;QA / Tester;Analista de Sistemas,Desarrollador 2:100;Diseñador UX/UI:25;QA / Tester:50;Analista de Sistemas:25,#c0392b,,EDT 1.5.3 · A17
26,"Hito: Producto mínimo viable (registro, búsqueda y agenda)",05/04/2027,05/04/2027,0,0,0.00,Gerente de Proyecto,24;25,5.5,,,,,EDT 1.5.3 · H4
27,Módulo de evaluación y reportes,06/04/2027,19/04/2027,10,0,,,,6,,,,,EDT 1.6
28,Desarrollar la evaluación y calificación del tutor,06/04/2027,19/04/2027,10,0,2352.20,Desarrollador 2,24;25,6.1,Desarrollador 2;Diseñador UX/UI;QA / Tester;Analista de Sistemas,Desarrollador 2:100;Diseñador UX/UI:25;QA / Tester:50;Analista de Sistemas:25,#c0392b,,EDT 1.6.1 · A18
29,Desarrollar los reportes para la coordinación,06/04/2027,19/04/2027,10,0,2601.00,Desarrollador 1,24;25,6.2,Desarrollador 1;Diseñador UX/UI;QA / Tester;Analista de Sistemas,Desarrollador 1:100;Diseñador UX/UI:25;QA / Tester:50;Analista de Sistemas:25,#c0392b,,EDT 1.6.2 · A19
30,Hito: Desarrollo completo (fin del Sprint 4),19/04/2027,19/04/2027,0,0,0.00,Gerente de Proyecto,28;29,6.3,,,#c0392b,,EDT 1.6.2 · H5
31,Pruebas,03/02/2027,07/05/2027,65,0,,,,7,,,,,EDT 1.7
32,Elaborar el plan y los casos de prueba,03/02/2027,16/02/2027,8,0,1121.44,QA / Tester,10,7.1,QA / Tester;Analista de Sistemas,QA / Tester:100;Analista de Sistemas:25,,,EDT 1.7.1 · A20
33,"Ejecutar pruebas de integración, sistema, rendimiento y seguridad",20/04/2027,29/04/2027,8,0,1894.08,QA / Tester,30;32,7.2,QA / Tester;Desarrollador 1;Desarrollador 2,QA / Tester:100;Desarrollador 1:50;Desarrollador 2:50,#c0392b,,EDT 1.7.1 · A21
34,Ejecutar pruebas de aceptación (UAT) y de usabilidad,30/04/2027,07/05/2027,6,0,1999.92,QA / Tester,33,7.3,QA / Tester;Analista de Sistemas;Diseñador UX/UI;Desarrollador 1;Desarrollador 2,QA / Tester:100;Analista de Sistemas:75;Diseñador UX/UI:50;Desarrollador 1:25;Desarrollador 2:25,#c0392b,,EDT 1.7.2 · A22
35,Hito: Sistema aceptado por el patrocinador,07/05/2027,07/05/2027,0,0,0.00,Gerente de Proyecto,34,7.4,,,#c0392b,,EDT 1.7.2 · H6
36,Capacitación y piloto,20/04/2027,26/05/2027,27,0,,,,8,,,,,EDT 1.8
37,Elaborar manuales y material de capacitación,20/04/2027,26/04/2027,5,0,638.60,Analista de Sistemas,30,8.1,Analista de Sistemas;Diseñador UX/UI,Analista de Sistemas:50;Diseñador UX/UI:50,,,EDT 1.8.1 · A23
38,"Capacitar a coordinadores, tutores y estudiantes",10/05/2027,12/05/2027,3,0,649.44,Analista de Sistemas,35;37,8.2,Analista de Sistemas;Diseñador UX/UI;Gerente de Proyecto,Analista de Sistemas:100;Diseñador UX/UI:25;Gerente de Proyecto:25,#c0392b,,EDT 1.8.1 · A24
39,Desplegar la plataforma en producción,10/05/2027,11/05/2027,2,0,576.32,Desarrollador 1,35,8.3,Desarrollador 1;Desarrollador 2;QA / Tester,Desarrollador 1:100;Desarrollador 2:100;QA / Tester:25,,,EDT 1.8.2 · A25
40,Ejecutar el piloto con estudiantes de primer año,13/05/2027,26/05/2027,10,0,2819.20,Gerente de Proyecto,38;39,8.4,Desarrollador 1;Desarrollador 2;QA / Tester;Analista de Sistemas;Diseñador UX/UI,Desarrollador 1:50;Desarrollador 2:50;QA / Tester:50;Analista de Sistemas:50;Diseñador UX/UI:25,#c0392b,,EDT 1.8.2 · A26
41,Hito: Piloto concluido,26/05/2027,26/05/2027,0,0,0.00,Gerente de Proyecto,40,8.5,,,#c0392b,,EDT 1.8.2 · H7
42,Cierre del proyecto,27/05/2027,04/06/2027,7,0,,,,9,,,,,EDT 1.9
43,Evaluar los resultados del piloto y elaborar el informe final,27/05/2027,01/06/2027,4,0,1177.44,Gerente de Proyecto,41,9.1,Gerente de Proyecto;Analista de Sistemas;QA / Tester,Gerente de Proyecto:100;Analista de Sistemas:50;QA / Tester:25,#c0392b,,EDT 1.9.1 · A27
44,Documentar lecciones aprendidas y formalizar el cierre,02/06/2027,04/06/2027,3,0,1065.36,Gerente de Proyecto,43,9.2,Gerente de Proyecto;Analista de Sistemas;Diseñador UX/UI;Desarrollador 1;Desarrollador 2;QA / Tester,Gerente de Proyecto:100;Analista de Sistemas:25;Diseñador UX/UI:25;Desarrollador 1:25;Desarrollador 2:25;QA / Tester:25,#c0392b,,EDT 1.9.2 · A28
45,Hito: Cierre formal del proyecto,04/06/2027,04/06/2027,0,0,0.00,Gerente de Proyecto,44,9.3,,,#c0392b,,EDT 1.9.2 · H8
