# Plataforma de tutorías entre estudiantes (TutorFISC)

Schedule from MS Project XML, 2027-01-04 to 2027-06-04.

## Calendars

- Estándar Panamá 2027: Mon-Fri 08:00-12:00, 13:00-17:00; Sat-Sun off. Exceptions (off unless hours are given): 2027-02-08 to 2027-02-09, 2027-03-26.

## Resources

| Resource | Rate |
| --- | --- |
| Gerente de Proyecto | 24.92 |
| Analista de Sistemas | 17.13 |
| Diseñador UX/UI | 14.8 |
| Desarrollador 1 | 17.91 |
| Desarrollador 2 | 14.8 |
| QA / Tester | 13.24 |

## Schedule

| ID | WBS | Task | Type | Duration | Start | Finish | Predecessors | Resources |
| --- | --- | --- | --- | --- | --- | --- | --- | --- |
| 1 | 1.1 | **Gestión del proyecto** |  | 100d | 2027-01-04 | 2027-05-26 |  |  |
| 2 | 1.1.1 | Elaborar el Acta de constitución y obtener su aprobación |  | 5d | 2027-01-04 | 2027-01-08 |  | Gerente de Proyecto; Analista de Sistemas [25%] |
| 3 | 1.1.1 | Hito: Acta de constitución aprobada | milestone | 0d | 2027-01-08 | 2027-01-08 | 2 |  |
| 4 | 1.1.2 | Elaborar el plan de gestión del proyecto |  | 10d | 2027-01-11 | 2027-01-22 | 2 | Gerente de Proyecto [60%]; QA / Tester [25%] |
| 5 | 1.1.3 | Dar seguimiento y control al proyecto (informes, valor ganado, control de cambios) |  | 78d | 2027-02-03 | 2027-05-26 | 11 | Gerente de Proyecto [60%] |
| 6 | 1.2 | **Requisitos** |  | 17d | 2027-01-11 | 2027-02-02 |  |  |
| 7 | 1.2.1 | Realizar entrevistas y encuestas a estudiantes, tutores y coordinación |  | 8d | 2027-01-11 | 2027-01-20 | 2 | Analista de Sistemas; Diseñador UX/UI [50%] |
| 8 | 1.2.1 | Gestionar con la DITIC la autorización de credenciales institucionales |  | 15d | 2027-01-11 | 2027-01-29 | 2 | Gerente de Proyecto [20%] |
| 9 | 1.2.2 | Especificar los requisitos (SRS) y construir el Product Backlog |  | 7d | 2027-01-21 | 2027-01-29 | 7 | Analista de Sistemas; Gerente de Proyecto [20%]; Diseñador UX/UI [25%] |
| 10 | 1.2.2 | Validar los requisitos y el Product Backlog con el patrocinador |  | 2d | 2027-02-01 | 2027-02-02 | 9 | Analista de Sistemas; Gerente de Proyecto [40%] |
| 11 | 1.2.2 | Hito: Plan de gestión y requisitos aprobados | milestone | 0d | 2027-02-02 | 2027-02-02 | 4, 10 |  |
| 12 | 1.3 | **Diseño UX/UI y arquitectura** |  | 11d | 2027-02-03 | 2027-02-19 |  |  |
| 13 | 1.3.1 | Diseñar wireframes y flujos de navegación |  | 6d | 2027-02-03 | 2027-02-12 | 10 | Diseñador UX/UI; Analista de Sistemas [25%] |
| 14 | 1.3.1 | Elaborar el prototipo de alta fidelidad y validarlo con usuarios |  | 5d | 2027-02-15 | 2027-02-19 | 13 | Diseñador UX/UI; Analista de Sistemas [25%] |
| 15 | 1.3.2 | Definir la arquitectura y el modelo de datos |  | 6d | 2027-02-03 | 2027-02-12 | 10 | Desarrollador 1; Desarrollador 2 [50%]; Analista de Sistemas [25%] |
| 16 | 1.3.3 | Configurar hosting, base de datos, dominio, repositorio y CI/CD |  | 5d | 2027-02-15 | 2027-02-19 | 15 | Desarrollador 2; Desarrollador 1 [50%] |
| 17 | 1.3.3 | Hito: Diseño y arquitectura aprobados | milestone | 0d | 2027-02-19 | 2027-02-19 | 14, 16 |  |
| 18 | 1.4 | **Módulo de usuarios y tutores** |  | 10d | 2027-02-22 | 2027-03-05 |  |  |
| 19 | 1.4.1 | Desarrollar el inicio de sesión con credenciales institucionales y el perfil del estudiante |  | 10d | 2027-02-22 | 2027-03-05 | 17, 8 | Desarrollador 1; Diseñador UX/UI [25%]; QA / Tester [50%]; Analista de Sistemas [25%] |
| 20 | 1.4.2 | Desarrollar el registro y la validación de tutores por materia |  | 10d | 2027-02-22 | 2027-03-05 | 17 | Desarrollador 2; Diseñador UX/UI [25%]; QA / Tester [50%]; Analista de Sistemas [25%] |
| 21 | 1.5 | **Módulo de búsqueda, agenda y notificaciones** |  | 20d | 2027-03-08 | 2027-04-05 |  |  |
| 22 | 1.5.1 | Desarrollar la búsqueda y el perfil público de tutores |  | 10d | 2027-03-08 | 2027-03-19 | 19, 20 | Desarrollador 2; Diseñador UX/UI [25%]; QA / Tester [50%]; Analista de Sistemas [25%] |
| 23 | 1.5.2 | Desarrollar la gestión de disponibilidad (agenda) del tutor |  | 10d | 2027-03-08 | 2027-03-19 | 19, 20 | Desarrollador 1; Diseñador UX/UI [25%]; QA / Tester [50%]; Analista de Sistemas [25%] |
| 24 | 1.5.2 | Desarrollar la reserva, cancelación y reprogramación de sesiones |  | 10d | 2027-03-22 | 2027-04-05 | 22, 23 | Desarrollador 1; Diseñador UX/UI [25%]; QA / Tester [50%]; Analista de Sistemas [25%] |
| 25 | 1.5.3 | Desarrollar las notificaciones y los recordatorios |  | 10d | 2027-03-22 | 2027-04-05 | 22, 23 | Desarrollador 2; Diseñador UX/UI [25%]; QA / Tester [50%]; Analista de Sistemas [25%] |
| 26 | 1.5.3 | Hito: Producto mínimo viable (registro, búsqueda y agenda) | milestone | 0d | 2027-04-05 | 2027-04-05 | 24, 25 |  |

Notes:
- 2: A01 · EDT 1.1.1 · Responsable: Gerente de Proyecto
- 3: H1 · EDT 1.1.1 · Responsable: Gerente de Proyecto
- 4: A02 · EDT 1.1.2 · Responsable: Gerente de Proyecto
- 5: A03 · EDT 1.1.3 · Responsable: Gerente de Proyecto
- 7: A04 · EDT 1.2.1 · Responsable: Analista de Sistemas
- 8: A05 · EDT 1.2.1 · Responsable: Gerente de Proyecto
- 9: A06 · EDT 1.2.2 · Responsable: Analista de Sistemas
- 10: A07 · EDT 1.2.2 · Responsable: Analista de Sistemas
- 11: H2 · EDT 1.2.2 · Responsable: Gerente de Proyecto
- 13: A08 · EDT 1.3.1 · Responsable: Diseñador UX/UI
- 14: A09 · EDT 1.3.1 · Responsable: Diseñador UX/UI
- 15: A10 · EDT 1.3.2 · Responsable: Desarrollador 1
- 16: A11 · EDT 1.3.3 · Responsable: Desarrollador 2
- 17: H3 · EDT 1.3.3 · Responsable: Gerente de Proyecto
- 19: A12 · EDT 1.4.1 · Responsable: Desarrollador 1
- 20: A13 · EDT 1.4.2 · Responsable: Desarrollador 2
- 22: A14 · EDT 1.5.1 · Responsable: Desarrollador 2
- 23: A15 · EDT 1.5.2 · Responsable: Desarrollador 1
- 24: A16 · EDT 1.5.2 · Responsable: Desarrollador 1
- 25: A17 · EDT 1.5.3 · Responsable: Desarrollador 2
- 26: H4 · EDT 1.5.3 · Responsable: Gerente de Proyecto

| ID | WBS | Task | Type | Duration | Start | Finish | Predecessors | Resources |
| --- | --- | --- | --- | --- | --- | --- | --- | --- |
| 27 | 1.6 | **Módulo de evaluación y reportes** |  | 10d | 2027-04-06 | 2027-04-19 |  |  |
| 28 | 1.6.1 | Desarrollar la evaluación y calificación del tutor |  | 10d | 2027-04-06 | 2027-04-19 | 24, 25 | Desarrollador 2; Diseñador UX/UI [25%]; QA / Tester [50%]; Analista de Sistemas [25%] |
| 29 | 1.6.2 | Desarrollar los reportes para la coordinación |  | 10d | 2027-04-06 | 2027-04-19 | 24, 25 | Desarrollador 1; Diseñador UX/UI [25%]; QA / Tester [50%]; Analista de Sistemas [25%] |
| 30 | 1.6.2 | Hito: Desarrollo completo (fin del Sprint 4) | milestone | 0d | 2027-04-19 | 2027-04-19 | 28, 29 |  |
| 31 | 1.7 | **Pruebas** |  | 65d | 2027-02-03 | 2027-05-07 |  |  |
| 32 | 1.7.1 | Elaborar el plan y los casos de prueba |  | 8d | 2027-02-03 | 2027-02-16 | 10 | QA / Tester; Analista de Sistemas [25%] |
| 33 | 1.7.1 | Ejecutar pruebas de integración, sistema, rendimiento y seguridad |  | 8d | 2027-04-20 | 2027-04-29 | 30, 32 | QA / Tester; Desarrollador 1 [50%]; Desarrollador 2 [50%] |
| 34 | 1.7.2 | Ejecutar pruebas de aceptación (UAT) y de usabilidad |  | 6d | 2027-04-30 | 2027-05-07 | 33 | QA / Tester; Analista de Sistemas [75%]; Diseñador UX/UI [50%]; Desarrollador 1 [25%]; Desarrollador 2 [25%] |
| 35 | 1.7.2 | Hito: Sistema aceptado por el patrocinador | milestone | 0d | 2027-05-07 | 2027-05-07 | 34 |  |
| 36 | 1.8 | **Capacitación y piloto** |  | 27d | 2027-04-20 | 2027-05-26 |  |  |
| 37 | 1.8.1 | Elaborar manuales y material de capacitación |  | 5d | 2027-04-20 | 2027-04-26 | 30 | Analista de Sistemas [50%]; Diseñador UX/UI [50%] |
| 38 | 1.8.1 | Capacitar a coordinadores, tutores y estudiantes |  | 3d | 2027-05-10 | 2027-05-12 | 35, 37 | Analista de Sistemas; Diseñador UX/UI [25%]; Gerente de Proyecto [25%] |
| 39 | 1.8.2 | Desplegar la plataforma en producción |  | 2d | 2027-05-10 | 2027-05-11 | 35 | Desarrollador 1; Desarrollador 2; QA / Tester [25%] |
| 40 | 1.8.2 | Ejecutar el piloto con estudiantes de primer año |  | 10d | 2027-05-13 | 2027-05-26 | 38, 39 | Desarrollador 1 [50%]; Desarrollador 2 [50%]; QA / Tester [50%]; Analista de Sistemas [50%]; Diseñador UX/UI [25%] |
| 41 | 1.8.2 | Hito: Piloto concluido | milestone | 0d | 2027-05-26 | 2027-05-26 | 40 |  |
| 42 | 1.9 | **Cierre del proyecto** |  | 7d | 2027-05-27 | 2027-06-04 |  |  |
| 43 | 1.9.1 | Evaluar los resultados del piloto y elaborar el informe final |  | 4d | 2027-05-27 | 2027-06-01 | 41 | Gerente de Proyecto; Analista de Sistemas [50%]; QA / Tester [25%] |
| 44 | 1.9.2 | Documentar lecciones aprendidas y formalizar el cierre |  | 3d | 2027-06-02 | 2027-06-04 | 43 | Gerente de Proyecto; Analista de Sistemas [25%]; Diseñador UX/UI [25%]; Desarrollador 1 [25%]; Desarrollador 2 [25%]; QA / Tester [25%] |
| 45 | 1.9.2 | Hito: Cierre formal del proyecto | milestone | 0d | 2027-06-04 | 2027-06-04 | 44 |  |

Notes:
- 28: A18 · EDT 1.6.1 · Responsable: Desarrollador 2
- 29: A19 · EDT 1.6.2 · Responsable: Desarrollador 1
- 30: H5 · EDT 1.6.2 · Responsable: Gerente de Proyecto
- 32: A20 · EDT 1.7.1 · Responsable: QA / Tester
- 33: A21 · EDT 1.7.1 · Responsable: QA / Tester
- 34: A22 · EDT 1.7.2 · Responsable: QA / Tester
- 35: H6 · EDT 1.7.2 · Responsable: Gerente de Proyecto
- 37: A23 · EDT 1.8.1 · Responsable: Analista de Sistemas
- 38: A24 · EDT 1.8.1 · Responsable: Analista de Sistemas
- 39: A25 · EDT 1.8.2 · Responsable: Desarrollador 1
- 40: A26 · EDT 1.8.2 · Responsable: Gerente de Proyecto
- 41: H7 · EDT 1.8.2 · Responsable: Gerente de Proyecto
- 43: A27 · EDT 1.9.1 · Responsable: Gerente de Proyecto
- 44: A28 · EDT 1.9.2 · Responsable: Gerente de Proyecto
- 45: H8 · EDT 1.9.2 · Responsable: Gerente de Proyecto
